Schedule from MS Project, 2020-10-25 to 2020-12-17, costs in R$, A marks actual dates.

## Calendars

- Padrão: Mon-Fri 09:00-12:00, 13:00-18:00; Sat-Sun off.

## Resources

| Resource | Rate |
| --- | --- |
| Cliente |  |
| Vitor Hermeto | 200 |
| Yerro | 120 |
| Vitor Ramos | 100 |
| Daniel | 200 |
| Enzo | 200 |

## Schedule

| ID | WBS | Task | Type | Duration | Start | Finish | Predecessors | Complete | Remaining | Baseline start | Baseline finish | Baseline duration | Total slack | Resources | Work | Actual work | Cost | Baseline cost | Actual cost |
| --- | --- | --- | --- | --- | --- | --- | --- | --- | --- | --- | --- | --- | --- | --- | --- | --- | --- | --- | --- |
| 1 | 1 | **Projeto Reclama Lá** |  | 38.25d? | 2020-10-25 09:00 A | 2020-12-17 11:00 |  | 70% | 11.58d? | 2020-10-25 09:00 | 2020-12-17 11:00 | 38.25d? | 0d |  | 168h | 97h | 25,266.67 | 25,266.67 | 15,466.67 |
| 2 | 1.1 | **Prospecção** |  | 10.38d? | 2020-10-28 08:00 A | 2020-11-11 12:00 A |  | 100% |  | 2020-10-28 08:00 | 2020-11-11 12:00 | 10.38d? |  |  | 8h | 8h | 1,000 | 1,000 | 1,000 |
| 3 | 1.1.1 | **Ptec** |  | 4.25d? | 2020-10-28 08:00 A | 2020-11-03 11:00 A |  | 100% |  | 2020-10-28 08:00 | 2020-11-03 11:00 | 4.25d? |  |  | 4h | 4h | 480 | 480 | 480 |
| 4 | 1.1.1.1 | Estudar Domínio de Aplicação |  | 0.12d? | 2020-10-28 08:00 A | 2020-10-28 09:00 A |  | 100% |  | 2020-10-28 08:00 | 2020-10-28 09:00 | 0.12d? |  | Yerro | 1h | 1h | 120 | 120 | 120 |
| 5 | 1.1.1.2 | Reunir-se com Fornecedor de Requisitos |  | 0.12d | 2020-10-29 09:00 A | 2020-10-29 10:00 A | 4 | 100% |  | 2020-10-29 09:00 | 2020-10-29 10:00 | 0.12d |  | Yerro | 1h | 1h | 120 | 120 | 120 |
| 6 | 1.1.1.3 | Redigir PTEC |  | 0.12d | 2020-10-30 10:00 A | 2020-10-30 11:00 A | 5 | 100% |  | 2020-10-30 10:00 | 2020-10-30 11:00 | 0.12d |  | Yerro | 1h | 1h | 120 | 120 | 120 |
| 7 | 1.1.1.4 | Revisar PTEC |  | 1d | 2020-10-30 11:00 A | 2020-11-03 11:00 A | 6 | 100% |  | 2020-10-30 11:00 | 2020-11-03 11:00 | 1d |  | Yerro | 1h | 1h | 120 | 120 | 120 |
| 8 | 1.1.1.5 | Aprovar Ptec | milestone | 0d | 2020-11-03 11:00 A | 2020-11-03 11:00 A | 7 | 100% |  | 2020-11-03 11:00 | 2020-11-03 11:00 | 0d |  | Cliente |  |  |  |  |  |
| 9 | 1.1.2 | **Estimativa Preliminar de Tamanho** |  | 4d | 2020-11-03 11:00 A | 2020-11-09 11:00 A |  | 100% |  | 2020-11-03 11:00 | 2020-11-09 11:00 | 4d |  |  | 2h | 2h | 320 | 320 | 320 |
| 10 | 1.1.2.1 | Estimar tamanho do Projeto |  | 1d | 2020-11-03 11:00 A | 2020-11-05 11:00 A | 7 | 100% |  | 2020-11-03 11:00 | 2020-11-05 11:00 | 1d |  | Yerro | 1h | 1h | 120 | 120 | 120 |
| 11 | 1.1.2.2 | Revisar Estimativa de tamanho do Projeto |  | 1d | 2020-11-05 11:00 A | 2020-11-09 11:00 A | 10 | 100% |  | 2020-11-05 11:00 | 2020-11-09 11:00 | 1d |  | Daniel | 1h | 1h | 200 | 200 | 200 |
| 12 | 1.1.3 | **Estimativa Preliminar de Cronograma e Orçamento** |  | 2.12d | 2020-11-09 11:00 A | 2020-11-11 12:00 A |  | 100% |  | 2020-11-09 11:00 | 2020-11-11 12:00 | 2.12d |  |  | 2h | 2h | 200 | 200 | 200 |
| 13 | 1.1.3.1 | Elaborar Cronograma e Orçamento Preliminares |  | 0.12d | 2020-11-09 11:00 A | 2020-11-09 12:00 A | 9 | 100% |  | 2020-11-09 11:00 | 2020-11-09 12:00 | 0.12d |  | Vitor Ramos | 1h | 1h | 100 | 100 | 100 |
| 14 | 1.1.3.2 | Revisar Cronograma e Orçamento Preliminares |  | 1d | 2020-11-10 08:00 A | 2020-11-11 12:00 A | 13 | 100% |  | 2020-11-10 08:00 | 2020-11-11 12:00 | 1d |  | Vitor Ramos | 1h | 1h | 100 | 100 | 100 |
| 15 | 1.2 | **Análise** |  | 6.96d | 2020-11-11 13:00 A | 2020-11-20 11:40 A |  | 100% |  | 2020-11-11 13:00 | 2020-11-20 11:40 | 6.96d |  |  | 29h | 29h | 3,266.67 | 3,266.67 | 3,266.67 |
| 16 | 1.2.1 | **Documento de Requisitos** |  | 3.83d | 2020-11-11 13:00 A | 2020-11-17 10:40 A |  | 100% |  | 2020-11-11 13:00 | 2020-11-17 10:40 | 3.83d |  |  | 16h | 16h | 1,706.67 | 1,706.67 | 1,706.67 |
| 17 | 1.2.1.1 | Reunir-se com o Cliente |  | 0.17d | 2020-11-11 13:00 A | 2020-11-12 08:40 A | 14 | 100% |  | 2020-11-11 13:00 | 2020-11-12 08:40 | 0.17d |  | Yerro; Vitor Ramos; Cliente | 2h | 2h | 146.67 | 146.67 | 146.67 |
| 18 | 1.2.1.2 | Elaborar DRE |  | 1d | 2020-11-12 08:40 A | 2020-11-16 08:40 A | 17 | 100% |  | 2020-11-12 08:40 | 2020-11-16 08:40 | 1d |  | Yerro | 8h | 8h | 960 | 960 | 960 |
| 19 | 1.2.1.3 | Revisar DRE |  | 0.75d | 2020-11-16 08:40 A | 2020-11-17 10:40 A | 18 | 100% |  | 2020-11-16 08:40 | 2020-11-17 10:40 | 0.75d |  | Vitor Ramos | 6h | 6h | 600 | 600 | 600 |
| 20 | 1.2.1.4 | Submeter DTE para aprovação do Cliente | milestone | 0d | 2020-11-17 10:40 A | 2020-11-17 10:40 A | 19 | 100% |  | 2020-11-17 10:40 | 2020-11-17 10:40 | 0d |  | Cliente |  |  |  |  |  |
| 21 | 1.2.2 | **MRB** |  | 3.12d | 2020-11-17 10:40 A | 2020-11-20 11:40 A |  | 100% |  | 2020-11-17 10:40 | 2020-11-20 11:40 | 3.12d |  |  | 13h | 13h | 1,560 | 1,560 | 1,560 |
| 22 | 1.2.2.1 | Elaborar MRB |  | 1d | 2020-11-17 10:40 A | 2020-11-19 10:40 A | 20 | 100% |  | 2020-11-17 10:40 | 2020-11-19 10:40 | 1d |  | Yerro | 8h | 8h | 960 | 960 | 960 |
| 23 | 1.2.2.2 | Revisar MRB |  | 0.62d | 2020-11-19 10:40 A | 2020-11-20 11:40 A | 22 | 100% |  | 2020-11-19 10:40 | 2020-11-20 11:40 | 0.62d |  | Yerro | 5h | 5h | 600 | 600 | 600 |
| 24 | 1.3 | **Projeto** |  | 5d? | 2020-11-20 11:40 A | 2020-11-27 11:40 A |  | 100% |  | 2020-11-20 11:40 | 2020-11-27 11:40 | 5d? |  |  | 8h | 8h | 800 | 800 | 800 |
| 25 | 1.3.1 | Elaborar Diagramas de Classes |  | 0.75d | 2020-11-20 11:40 A | 2020-11-25 10:40 A | 23 | 100% |  | 2020-11-20 11:40 | 2020-11-25 10:40 | 0.75d |  | Vitor Ramos | 6h | 6h | 600 | 600 | 600 |
| 26 | 1.3.2 | Revisar Diagrama de Classes |  | 0.12d | 2020-11-25 10:40 A | 2020-11-25 11:40 A | 25 | 100% |  | 2020-11-25 10:40 | 2020-11-25 11:40 | 0.12d |  | Vitor Ramos | 1h | 1h | 100 | 100 | 100 |
| 27 | 1.3.3 | Atualizar MRB |  | 1d? | 2020-11-25 11:40 A | 2020-11-27 11:40 A | 26 | 100% |  | 2020-11-25 11:40 | 2020-11-27 11:40 | 1d? |  | Vitor Ramos [12.5%] | 1h | 1h | 100 | 100 | 100 |

| ID | WBS | Task | Duration | Start | Finish | Predecessors | Complete | Remaining | Baseline start | Baseline finish | Baseline duration | Total slack | Free slack | Resources | Work | Actual work | Cost | Baseline cost | Actual cost |
| --- | --- | --- | --- | --- | --- | --- | --- | --- | --- | --- | --- | --- | --- | --- | --- | --- | --- | --- | --- |
| 28 | 1.4 | **Implementação** | 38.25d? | 2020-10-26 08:00 A | 2020-12-17 11:00 |  | 51% | 18.56d? | 2020-10-26 08:00 | 2020-12-17 11:00 | 38.25d? | 0d |  |  | 101h | 52h | 20,200 | 20,200 | 10,400 |
| 29 | 1.4.1 | **Release 1** | 26.25d? | 2020-11-11 09:00 A | 2020-12-17 11:00 A |  | 100% |  | 2020-11-11 09:00 | 2020-12-17 11:00 | 26.25d? |  |  |  | 52h | 52h | 10,400 | 10,400 | 10,400 |
| 30 | 1.4.1.1 | Implementar RFS01 | 0.5d? | 2020-12-16 11:00 A | 2020-12-17 11:00 A | 27 | 100% |  | 2020-12-16 11:00 | 2020-12-17 11:00 | 0.5d? |  |  | Vitor Hermeto | 4h | 4h | 800 | 800 | 800 |
| 31 | 1.4.1.2 | Implementar RFS02 | 0.75d | 2020-12-10 09:00 A | 2020-12-11 11:00 A | 32 | 100% |  | 2020-12-10 09:00 | 2020-12-11 11:00 | 0.75d |  |  | Vitor Hermeto | 6h | 6h | 1,200 | 1,200 | 1,200 |
| 32 | 1.4.1.3 | Implementar RFS03 | 1d? | 2020-12-08 09:00 A | 2020-12-10 09:00 A | 33 | 100% |  | 2020-12-08 09:00 | 2020-12-10 09:00 | 1d? |  |  | Vitor Hermeto | 8h | 8h | 1,600 | 1,600 | 1,600 |
| 33 | 1.4.1.4 | Implementar RFS04 | 0.5d? | 2020-12-07 09:00 A | 2020-12-08 09:00 A | 34 | 100% |  | 2020-12-07 09:00 | 2020-12-08 09:00 | 0.5d? |  |  | Vitor Hermeto | 4h | 4h | 800 | 800 | 800 |
| 34 | 1.4.1.5 | Implementar RFS09 | 0.5d? | 2020-12-04 09:00 A | 2020-12-07 09:00 A | 35 | 100% |  | 2020-12-04 09:00 | 2020-12-07 09:00 | 0.5d? |  |  | Vitor Hermeto | 4h | 4h | 800 | 800 | 800 |
| 35 | 1.4.1.6 | Implementar RFS10 | 0.5d? | 2020-12-03 09:00 A | 2020-12-04 09:00 A | 36 | 100% |  | 2020-12-03 09:00 | 2020-12-04 09:00 | 0.5d? |  |  | Vitor Hermeto | 4h | 4h | 800 | 800 | 800 |
| 36 | 1.4.1.7 | Implementar RFS11 | 0.5d | 2020-12-02 08:00 A | 2020-12-02 12:00 A | 37 | 100% |  | 2020-12-02 08:00 | 2020-12-02 12:00 | 0.5d |  |  | Vitor Hermeto | 4h | 4h | 800 | 800 | 800 |
| 37 | 1.4.1.8 | **Testar Relase 1** | 14.38d? | 2020-11-11 09:00 A | 2020-12-01 12:00 A |  | 100% |  | 2020-11-11 09:00 | 2020-12-01 12:00 | 14.38d? |  |  |  | 18h | 18h | 3,600 | 3,600 | 3,600 |
| 38 | 1.4.1.8.1 | Testar RFS01 | 0.25d? | 2020-11-13 09:00 A | 2020-11-13 11:00 A | 40 | 100% |  | 2020-11-13 09:00 | 2020-11-13 11:00 | 0.25d? |  |  | Vitor Hermeto | 2h | 2h | 400 | 400 | 400 |
| 39 | 1.4.1.8.2 | Testar RFS02 | 0.38d | 2020-12-01 09:00 A | 2020-12-01 12:00 A | 41 | 100% |  | 2020-12-01 09:00 | 2020-12-01 12:00 | 0.38d |  |  | Vitor Hermeto | 3h | 3h | 600 | 600 | 600 |
| 40 | 1.4.1.8.3 | Testar RFS03 | 0.5d | 2020-11-12 09:00 A | 2020-11-13 09:00 A | 42 | 100% |  | 2020-11-12 09:00 | 2020-11-13 09:00 | 0.5d |  |  | Vitor Hermeto | 4h | 4h | 800 | 800 | 800 |
| 41 | 1.4.1.8.4 | Testar RFS04 | 0.38d | 2020-11-30 10:00 A | 2020-12-01 09:00 A | 43 | 100% |  | 2020-11-30 10:00 | 2020-12-01 09:00 | 0.38d |  |  | Vitor Hermeto | 3h | 3h | 600 | 600 | 600 |
| 42 | 1.4.1.8.5 | Testar RFS09 | 0.25d | 2020-11-11 11:00 A | 2020-11-12 09:00 A | 44 | 100% |  | 2020-11-11 11:00 | 2020-11-12 09:00 | 0.25d |  |  | Vitor Hermeto | 2h | 2h | 400 | 400 | 400 |
| 43 | 1.4.1.8.6 | Testar RFS10 | 0.25d | 2020-11-20 11:00 A | 2020-11-23 09:00 A | 45 | 100% |  | 2020-11-20 11:00 | 2020-11-23 09:00 | 0.25d |  |  | Vitor Hermeto | 2h | 2h | 400 | 400 | 400 |
| 44 | 1.4.1.8.7 | Testar RFS11 | 0.25d | 2020-11-11 09:00 A | 2020-11-11 11:00 A | 46 | 100% |  | 2020-11-11 09:00 | 2020-11-11 11:00 | 0.25d |  |  | Vitor Hermeto | 2h | 2h | 400 | 400 | 400 |
| 45 | 1.4.2 | **Release 2** | 8d? | 2020-10-30 08:00 | 2020-11-11 09:00 |  |  |  | 2020-10-30 08:00 | 2020-11-11 09:00 | 8d? | 26.12d |  |  | 33h |  | 6,600 | 6,600 |  |
| 46 | 1.4.2.1 | Implementar RFS05 | 0.75d? | 2020-11-09 11:00 | 2020-11-11 09:00 | 47 |  |  | 2020-11-09 11:00 | 2020-11-11 09:00 | 0.75d? | 26.25d |  | Vitor Hermeto | 6h |  | 1,200 | 1,200 |  |
| 47 | 1.4.2.2 | Implementar RFS06 | 0.5d | 2020-11-06 11:00 | 2020-11-09 11:00 | 48 |  |  | 2020-11-06 11:00 | 2020-11-09 11:00 | 0.5d | 26.75d | 0d | Vitor Hermeto | 4h |  | 800 | 800 |  |
| 48 | 1.4.2.3 | Implementar RFS07 | 1d | 2020-11-04 11:00 | 2020-11-06 11:00 | 49 |  |  | 2020-11-04 11:00 | 2020-11-06 11:00 | 1d | 26.75d | 0d | Vitor Hermeto | 8h |  | 1,600 | 1,600 |  |
| 49 | 1.4.2.4 | Implementar RFS08 | 0.5d | 2020-11-03 11:00 | 2020-11-04 11:00 | 50 |  |  | 2020-11-03 11:00 | 2020-11-04 11:00 | 0.5d | 26.75d | 0d | Vitor Hermeto | 4h |  | 800 | 800 |  |
| 50 | 1.4.2.5 | **Testar Release 2** | 2.25d | 2020-10-30 08:00 | 2020-11-03 11:00 |  |  |  | 2020-10-30 08:00 | 2020-11-03 11:00 | 2.25d | 26.12d | 0d |  | 11h |  | 2,200 | 2,200 |  |
| 51 | 1.4.2.5.1 | Testar RFS05 | 0.38d | 2020-11-03 08:00 | 2020-11-03 11:00 | 52 |  |  | 2020-11-03 08:00 | 2020-11-03 11:00 | 0.38d | 26.12d |  | Vitor Hermeto | 3h |  | 600 | 600 |  |
| 52 | 1.4.2.5.2 | Testar RFS06 | 0.25d | 2020-11-02 10:00 | 2020-11-02 12:00 | 53 |  |  | 2020-11-02 10:00 | 2020-11-02 12:00 | 0.25d | 26.75d | 0.62d | Vitor Hermeto | 2h |  | 400 | 400 |  |
| 53 | 1.4.2.5.3 | Testar RFS07 | 0.5d | 2020-10-30 10:00 | 2020-11-02 10:00 | 54 |  |  | 2020-10-30 10:00 | 2020-11-02 10:00 | 0.5d | 26.25d | 0d | Vitor Hermeto | 4h |  | 800 | 800 |  |
| 54 | 1.4.2.5.4 | Testar RFS08 | 0.25d | 2020-10-30 08:00 | 2020-10-30 10:00 | 55 |  |  | 2020-10-30 08:00 | 2020-10-30 10:00 | 0.25d | 26.12d | 0d | Vitor Hermeto | 2h |  | 400 | 400 |  |

| ID | WBS | Task | Type | Duration | Start | Finish | Predecessors | Baseline start | Baseline finish | Baseline duration | Total slack | Free slack | Resources | Work | Cost | Baseline cost |
| --- | --- | --- | --- | --- | --- | --- | --- | --- | --- | --- | --- | --- | --- | --- | --- | --- |
| 55 | 1.4.3 | **Release 3** |  | 3.38d? | 2020-10-26 08:00 | 2020-10-29 12:00 |  | 2020-10-26 08:00 | 2020-10-29 12:00 | 3.38d? | 26.75d | 0.62d |  | 16h | 3,200 | 3,200 |
| 56 | 1.4.3.1 | Implementar RFS12 |  | 0.5d? | 2020-10-29 08:00 | 2020-10-29 12:00 | 58 | 2020-10-29 08:00 | 2020-10-29 12:00 | 0.5d? | 26.12d |  | Vitor Hermeto | 4h | 800 | 800 |
| 57 | 1.4.3.2 | Implementar RFS13 |  | 0.5d? | 2020-10-28 08:00 | 2020-10-28 12:00 | 59 | 2020-10-28 08:00 | 2020-10-28 12:00 | 0.5d? | 27.12d |  | Vitor Hermeto | 4h | 800 | 800 |
| 58 | 1.4.3.3 | **Testar Release 3** |  | 1.38d? | 2020-10-26 08:00 | 2020-10-27 12:00 |  | 2020-10-26 08:00 | 2020-10-27 12:00 | 1.38d? | 26.75d | 0.62d |  | 8h | 1,600 | 1,600 |
| 59 | 1.4.3.3.1 | Testar RFS12 |  | 0.5d? | 2020-10-27 08:00 | 2020-10-27 12:00 | 61 | 2020-10-27 08:00 | 2020-10-27 12:00 | 0.5d? | 26.12d | 0.62d | Vitor Hermeto | 4h | 800 | 800 |
| 60 | 1.4.3.3.2 | Testar RFS13 |  | 0.5d | 2020-10-26 08:00 | 2020-10-26 12:00 | 62 | 2020-10-26 08:00 | 2020-10-26 12:00 | 0.5d | 27.12d |  | Vitor Hermeto | 4h | 800 | 800 |
| 61 | 1.5 | **Monitoramento e controle** |  | 0d? | 2020-10-25 09:00 | 2020-10-25 18:00 |  | 2020-10-25 09:00 | 2020-10-25 18:00 | 0d? | 0d |  |  | 4h |  |  |
| 62 | 1.5.1 | Analista | manual | 1d? | 2020-10-25 09:00 | 2020-10-25 18:00 |  | 2020-10-25 09:00 | 2020-10-25 18:00 | 1d? |  |  |  | 4h |  |  |
| 63 | 1.6 | **Fechamento** |  | 0d? | 2020-10-25 09:00 | 2020-10-25 09:00 |  | 2020-10-25 09:00 | 2020-10-25 09:00 | 0d? | 38.25d |  |  | 12h |  |  |
| 64 | 1.6.1 | Conclusão | manual | 1d? | 2020-10-25 09:00 | 2020-10-25 18:00 |  | 2020-10-25 09:00 | 2020-10-25 18:00 | 1d? |  |  |  | 12h |  |  |
| 65 | 1.7 | **Processo de controle de mudanças** |  | 0d? | 2020-10-25 09:00 | 2020-10-25 09:00 |  | 2020-10-25 09:00 | 2020-10-25 09:00 | 0d? | 38.25d |  |  | 6h |  |  |
| 66 | 1.7.1 | Revisão de erros encontrados | manual | 1d? | 2020-10-25 09:00 | 2020-10-25 18:00 |  | 2020-10-25 09:00 | 2020-10-25 18:00 | 1d? |  |  |  | 6h |  |  |
